# C:\Users\Navya\Desktop\Conveyor Belt Project 2

Schedule from MS Project, 2010-01-04 to 2012-02-02, status date 2010-01-04.

## Calendars

- Standard: Mon-Fri 08:00-12:00, 13:00-17:00; Sat-Sun off. Exceptions (off unless hours are given): 2010-05-31 (Memorial Day 2010), 2010-07-05 (Independence Day 2010), 2010-09-06 (Labor Day 2010), 2010-11-25 (Thanksgiving 2010), 2010-12-24 to 2010-12-27 (Christams 2010), 2010-12-31 (New Years 2011), 2011-05-30 (Memorial Day 2011), 2011-07-04 (Independence Day 2011), 2011-09-05 (Labor Day 2011), 2011-11-24 (Thanksgiving 2011), 2011-12-26 to 2011-12-27 (Christmas 2011), 2012-01-02 (New Years 2012).

## Resources

| Resource |
| --- |
| Design |
| Development |
| Documentation |
| Assembly |
| Purchasing |

## Schedule

| ID | WBS | Task | Duration | Start | Finish | Predecessors | Total slack | Free slack | Resources | Work |
| --- | --- | --- | --- | --- | --- | --- | --- | --- | --- | --- |
| 1 | 1 | **Conveyor Belt Project** | 530d | 2010-01-04 | 2012-02-02 |  | 0d |  |  | 13960h |
| 2 | 1.1 | **Hardware** | 440d | 2010-02-08 | 2011-10-28 |  | 0d |  |  | 4200h |
| 3 | 1.1.1 | Hardware Specifications | 50d | 2010-02-08 | 2010-04-16 | 24 | 0d |  | Development; Design | 800h |
| 4 | 1.1.2 | Hardware Design | 70d | 2010-04-19 | 2010-07-27 | 3 | 0d |  | Development; Design | 1120h |
| 5 | 1.1.3 | Hardware Documentation | 30d | 2010-07-28 | 2010-09-08 | 4 | 0d |  | Documentation; Design | 480h |
| 6 | 1.1.4 | Prototypes | 80d | 2010-11-18 | 2011-03-15 | 25 | 50d |  | Assembly; Development | 1280h |
| 7 | 1.1.5 | Order Circuit Boards | 5d | 2011-06-30 | 2011-07-07 | 26 | 5d | 0d | Purchasing | 40h |
| 8 | 1.1.6 | Assemble Preproduction Models | 30d | 2011-09-19 | 2011-10-28 | 7FS+50d | 5d |  | Assembly; Development | 480h |
| 9 | 1.2 | **Operating Systems** | 445d | 2010-02-08 | 2011-11-04 |  | 0d |  |  | 4640h |
| 10 | 1.2.1 | Kernel Specifications | 20d | 2010-02-08 | 2010-03-05 | 24 | 30d | 0d | Design | 160h |
| 11 | 1.2.2 | **Drivers** | 310d | 2010-03-08 | 2011-05-24 |  | 0d |  |  | 2640h |
| 12 | 1.2.2.1 | Disk drivers | 100d | 2010-03-08 | 2010-07-27 | 10 | 30d |  | Assembly; Development | 1600h |
| 13 | 1.2.2.2 | Serial I/O Drivers | 130d | 2010-11-18 | 2011-05-24 | 25 | 0d |  | Development | 1040h |
| 14 | 1.2.3 | Memory Management | 90d | 2010-03-08 | 2010-07-13 | 10 | 40d |  | Development | 720h |
| 15 | 1.2.4 | Operating System Documentation | 25d | 2010-03-08 | 2010-04-09 | 10 | 105d |  | Design; Development | 400h |
| 16 | 1.2.5 | Network Interface | 90d | 2011-06-30 | 2011-11-04 | 26 | 0d |  | Development | 720h |
| 17 | 1.3 | **Utilities** | 415d | 2010-02-08 | 2011-09-23 |  | 30d |  |  | 2160h |
| 18 | 1.3.1 | Utilities Specifications | 15d | 2010-02-08 | 2010-02-26 | 24 | 55d | 0d | Development; Design | 240h |
| 19 | 1.3.2 | Routine Utilities | 60d | 2010-03-01 | 2010-05-21 | 18 | 75d |  | Development | 480h |
| 20 | 1.3.3 | Complex Utilities | 80d | 2010-03-01 | 2010-06-21 | 18 | 55d |  | Development | 640h |
| 21 | 1.3.4 | Utilities Documentation | 20d | 2010-03-01 | 2010-03-26 | 18 | 115d |  | Documentation; Design | 320h |
| 22 | 1.3.5 | Shell | 60d | 2011-06-30 | 2011-09-23 | 26 | 30d |  | Development | 480h |
| 23 | 1.4 | **System Integration** | 530d | 2010-01-04 | 2012-02-02 |  | 0d |  |  | 2960h |
| 24 | 1.4.1 | Architectural Decisions | 25d | 2010-01-04 | 2010-02-05 |  | 0d |  | Design | 200h |
| 25 | 1.4.2 | Integration First Phase | 50d | 2010-09-09 | 2010-11-17 | 12, 14, 15, 19, 20, 21, 5 | 0d |  | Assembly; Development | 800h |
| 26 | 1.4.3 | System Hard/Software Test | 25d | 2011-05-25 | 2011-06-29 | 6, 13 | 0d |  | Assembly | 200h |
| 27 | 1.4.4 | Project Documentation | 50d | 2011-06-30 | 2011-09-09 | 26 | 40d |  | Documentation; Development | 800h |
| 28 | 1.4.5 | Integration Acceptance Testing | 60d | 2011-11-07 | 2012-02-02 | 16, 22, 27, 8 | 0d |  | Assembly; Development | 960h |
