# Conveyor Belt Project new

Schedule from MS Project, 2010-01-04 to 2012-02-02, costs in $.

## Calendars

- Standard: Mon-Fri 08:00-12:00, 13:00-17:00; Sat-Sun off. Exceptions (off unless hours are given): 2010-01-01 to 2029-01-01 (New year, recurring), 2010-05-24 to 2029-05-28 (Memorial day, recurring), 2010-07-04 to 2029-07-04 (July 4th, recurring), 2010-07-05 (holiday after Sunday), 2010-09-06 to 2029-09-03 (Labor day, recurring), 2010-11-25 to 2029-11-22 (Thanks giving day, recurring), 2010-12-24 (holiday before Saturday), 2010-12-25 to 2029-12-26 (christmas, recurring), 2010-12-27 (holiday after Sunday), 2010-12-31 (holiday before Saturday), 2011-12-27 (holiday on weekend), 2012-01-02 (holiday after Sunday).

## Resources

| Resource | Group | Rate | Cost per use |
| --- | --- | --- | --- |
| Design | R&D | 100 |  |
| Development | R&D | 70 |  |
| Documentation | R&D | 60 |  |
| Assembly/Test | R&D | 70 |  |
| Purchasing | Procurement | 40 |  |
| Management Reserve |  |  | 102720 |
| Budget Reserve |  |  | 85600 |

## Schedule

| ID | WBS | Task | Type | Duration | Start | Finish | Predecessors | Total slack | Free slack | Resources | Work | Cost |
| --- | --- | --- | --- | --- | --- | --- | --- | --- | --- | --- | --- | --- |
| 1 | 5 | **Converyor Belt Project** |  | 530d | 2010-01-04 | 2012-02-02 |  | 0d |  |  | 13960h | 1,215,520 |
| 2 | 5.A | **Hardware** |  | 440d | 2010-02-08 | 2011-10-28 |  | 0d |  |  | 4200h | 326,400 |
| 3 | 5.A.a | Hardware Specifications |  | 50d | 2010-02-08 | 2010-04-16 | 26 | 0d |  | Design; Development | 800h | 68,000 |
| 4 | 5.A.b | Hardware Design |  | 70d | 2010-04-19 | 2010-07-27 | 3 | 0d |  | Design; Development | 1120h | 95,200 |
| 5 | 5.A.c | Hardware Documentation |  | 30d | 2010-07-28 | 2010-09-08 | 4 | 0d |  | Design; Documentation | 480h | 38,400 |
| 6 | 5.A.d | Prototypes |  | 80d | 2010-11-18 | 2011-03-15 | 29 | 50d |  | Assembly/Test; Development | 1280h | 89,600 |
| 7 | 5.A.e | Order Circuit Boards |  | 5d | 2011-06-30 | 2011-07-07 | 31 | 5d | 0d | Purchasing | 40h | 1,600 |
| 8 | 5.A.f | Assemble Preproduction Models |  | 30d | 2011-09-19 | 2011-10-28 | 7FS+50d | 5d |  | Assembly/Test; Development | 480h | 33,600 |
| 9 | 5.B | **Opreating System** |  | 445d | 2010-02-08 | 2011-11-04 |  | 0d |  |  | 4640h | 333,600 |
| 10 | 5.B.a | Kernel Specifications |  | 20d | 2010-02-08 | 2010-03-05 | 26 | 30d | 0d | Design | 160h | 16,000 |
| 11 | 5.B.f | Kernel Specified | milestone | 0d | 2010-03-05 | 2010-03-05 | 10 | 30d | 0d |  |  |  |
| 12 | 5.B.b | **Drivers** |  | 310d | 2010-03-08 | 2011-05-24 |  | 0d |  |  | 2640h | 184,800 |
| 13 | 5.B.b.* | Disk Drivers |  | 100d | 2010-03-08 | 2010-07-27 | 10, 11 | 30d |  | Assembly/Test; Development | 1600h | 112,000 |
| 14 | 5.B.b.* | Serial I/0 drivers |  | 130d | 2010-11-18 | 2011-05-24 | 29 | 0d |  | Development | 1040h | 72,800 |
| 15 | 5.B.c | Memory Management |  | 90d | 2010-03-08 | 2010-07-13 | 10 | 40d |  | Development | 720h | 50,400 |
| 16 | 5.B.d | Opreating System Documentation |  | 25d | 2010-03-08 | 2010-04-09 | 10 | 105d |  | Design; Documentation | 400h | 32,000 |
| 17 | 5.B.e | Network interface |  | 90d | 2011-06-30 | 2011-11-04 | 31 | 0d |  | Development | 720h | 50,400 |
| 18 | 5.C | **Utilities** |  | 415d | 2010-02-08 | 2011-09-23 |  | 30d |  |  | 2160h | 158,000 |
| 19 | 5.C.a | Utilities Specification |  | 15d | 2010-02-08 | 2010-02-26 | 26, 27 | 55d | 0d | Design; Development | 240h | 20,400 |
| 20 | 5.C.f | Utilities Secified | milestone | 0d | 2010-02-26 | 2010-02-26 | 19 | 75d | 0d |  |  |  |
| 21 | 5.C.b | Routine Utilities |  | 60d | 2010-03-01 | 2010-05-21 | 19, 20 | 75d |  | Development | 480h | 33,600 |
| 22 | 5.C.c | Complex Utitlities |  | 80d | 2010-03-01 | 2010-06-21 | 19 | 55d |  | Development | 640h | 44,800 |
| 23 | 5.C.d | Utilities Documentation |  | 20d | 2010-03-01 | 2010-03-26 | 19 | 115d |  | Design; Documentation | 320h | 25,600 |
| 24 | 5.C.e | Shell |  | 60d | 2011-06-30 | 2011-09-23 | 31 | 30d |  | Development | 480h | 33,600 |

| ID | WBS | Task | Type | Duration | Start | Finish | Predecessors | Total slack | Free slack | Constraint | Resources | Work | Cost |
| --- | --- | --- | --- | --- | --- | --- | --- | --- | --- | --- | --- | --- | --- |
| 25 | 5.D | **System Integration** |  | 530d | 2010-01-04 | 2012-02-02 |  | 0d |  |  |  | 2960h | 209,200 |
| 26 | 5.D.a | Architectural Decisions |  | 25d | 2010-01-04 | 2010-02-05 |  | 0d |  |  | Design | 200h | 20,000 |
| 27 | 5.D.i | Decided on Architectures | milestone | 0d | 2010-02-05 | 2010-02-05 | 26 | 55d | 0d |  |  |  |  |
| 28 | 5.D.f | Start of Integration | milestone | 0d | 2010-09-09 | 2010-09-09 | 13, 15, 16, 21, 22, 23, 5 | 0d |  | start no earlier than 2010-09-09 |  |  |  |
| 29 | 5.D.b | Integration First phase |  | 50d | 2010-09-09 | 2010-11-17 | 13, 15, 16, 21, 22, 23, 5, 28 | 0d |  |  | Assembly/Test; Development | 800h | 56,000 |
| 30 | 5.D.g | Start of system testing | milestone | 0d | 2011-05-25 | 2011-05-25 | 6, 14 | 0d |  | start no earlier than 2011-05-25 |  |  |  |
| 31 | 5.D.c | system hard/software test |  | 25d | 2011-05-25 | 2011-06-29 | 6, 14, 30 | 0d |  |  | Assembly/Test | 200h | 14,000 |
| 32 | 5.D.d | Project documentation |  | 50d | 2011-06-30 | 2011-09-09 | 31 | 40d |  |  | Development; Documentation | 800h | 52,000 |
| 33 | 5.D.h | Start of acceptance testing | milestone | 0d | 2011-11-07 | 2011-11-07 | 17, 24, 32, 8 | 0d |  | start no earlier than 2011-11-07 |  |  |  |
| 34 | 5.D.e | Integration acceptance testing |  | 60d | 2011-11-07 | 2012-02-02 | 17, 24, 32, 8, 33 | 0d |  |  | Assembly/Test; Development | 960h | 67,200 |
| 35 | 1.5 | **Contingency reserves** |  | 0d | 2012-02-02 | 2012-02-02 |  | 0d |  |  |  |  | 188,320 |
| 36 | 1.5.1 | Budget reserves | milestone | 0d | 2012-02-02 | 2012-02-02 | 34FF | 0d |  |  | Budget Reserve |  | 85,600 |
| 37 | 1.5.2 | Management Reserves | milestone | 0d | 2012-02-02 | 2012-02-02 | 34FF | 0d |  |  | Management Reserve |  | 102,720 |
