# Conveyor Belt Project new

Schedule from MS Project, 2010-01-04 to 2012-02-23, status date 2011-01-01, costs in $, A marks actual dates.

## Calendars

- Standard: Mon-Fri 08:00-12:00, 13:00-17:00; Sat-Sun off. Exceptions (off unless hours are given): 2010-01-01 to 2029-01-01 (New year, recurring), 2010-05-24 to 2029-05-28 (Memorial day, recurring), 2010-07-04 to 2029-07-04 (July 4th, recurring), 2010-07-05 (holiday after Sunday), 2010-09-06 to 2029-09-03 (Labor day, recurring), 2010-11-25 to 2029-11-22 (Thanks giving day, recurring), 2010-12-24 (holiday before Saturday), 2010-12-25 to 2029-12-26 (christmas, recurring), 2010-12-27 (holiday after Sunday), 2010-12-31 (holiday before Saturday), 2011-12-27 (holiday on weekend), 2012-01-02 (holiday after Sunday).

## Resources

| Resource | Group | Rate | Cost per use |
| --- | --- | --- | --- |
| Design | R&D | 100 |  |
| Development | R&D | 70 |  |
| Documentation | R&D | 60 |  |
| Assembly/Test | R&D | 70 |  |
| Purchasing | Procurement | 40 |  |
| Xdevelopment |  | 120 |  |
| Budget Reserve |  |  | 49440 |
| Management Reserve |  |  | 107664 |

## Schedule

| ID | WBS | Task | Type | Duration | Start | Finish | Predecessors | Complete | Remaining | Baseline start | Baseline finish | Baseline duration | Total slack | Resources | Work | Actual work | Cost | Baseline cost | Actual cost |
| --- | --- | --- | --- | --- | --- | --- | --- | --- | --- | --- | --- | --- | --- | --- | --- | --- | --- | --- | --- |
| 1 | 5 | **Converyor Belt Project** |  | 545d | 2010-01-04 A | 2012-02-23 |  | 61% | 214.44d | 2010-01-04 | 2012-02-02 | 530d | 0d |  | 14496h | 9152h | 1,242,384 | 1,208,304 | 721,200 |
| 2 | 5.A | **Hardware** |  | 459d | 2010-02-09 A | 2011-11-28 |  | 63% | 169.19d | 2010-02-08 | 2011-10-28 | 440d | 0d |  | 4184h | 2768h | 318,080 | 326,400 | 224,960 |
| 3 | 5.A.a | Hardware Specifications |  | 45d | 2010-02-09 A | 2010-04-12 A | 26 | 100% |  | 2010-02-08 | 2010-04-16 | 50d |  | Design; Development | 720h | 720h | 61,200 | 68,000 | 61,200 |
| 4 | 5.A.b | Hardware Design |  | 67d | 2010-04-13 A | 2010-07-16 A | 3 | 100% |  | 2010-04-19 | 2010-07-27 | 70d |  | Design; Development | 1072h | 1072h | 91,120 | 95,200 | 91,120 |
| 5 | 5.A.c | Hardware Documentation |  | 27d | 2010-07-19 A | 2010-08-24 A | 4 | 100% |  | 2010-07-28 | 2010-09-08 | 30d |  | Design; Documentation | 432h | 432h | 34,560 | 38,400 | 34,560 |
| 6 | 5.A.d | Prototypes |  | 80d | 2010-11-11 A | 2011-03-08 | 29 | 43% | 46d | 2010-11-18 | 2011-03-15 | 80d | 55d | Assembly/Test; Development | 1280h | 544h | 89,600 | 89,600 | 38,080 |
| 7 | 5.A.e | Order Circuit Boards |  | 25d | 2011-06-30 | 2011-08-04 | 31 |  |  | 2011-06-30 | 2011-07-07 | 5d | 0d | Purchasing | 200h |  | 8,000 | 1,600 |  |
| 8 | 5.A.f | Assemble Preproduction Models |  | 30d | 2011-10-17 | 2011-11-28 | 7FS+50d |  |  | 2011-09-19 | 2011-10-28 | 30d | 0d | Assembly/Test; Development | 480h |  | 33,600 | 33,600 |  |
| 9 | 5.B | **Opreating System** |  | 445d | 2010-02-08 A | 2011-11-04 |  | 61% | 173.16d | 2010-02-08 | 2011-11-04 | 445d | 75d |  | 4904h | 3416h | 353,280 | 333,600 | 249,120 |
| 10 | 5.B.a | Kernel Specifications |  | 25d | 2010-02-08 A | 2010-03-12 A | 26 | 100% |  | 2010-02-08 | 2010-03-05 | 20d |  | Design | 200h | 200h | 20,000 | 16,000 | 20,000 |
| 11 | 5.B.f | Kernel Specified | milestone | 0d | 2010-03-12 | 2010-03-12 | 10 |  |  | 2010-03-05 | 2010-03-05 | 0d | 495d |  |  |  |  |  |  |
| 12 | 5.B.b | **Drivers** |  | 300d | 2010-03-15 A | 2011-05-17 |  | 60% | 120d | 2010-03-08 | 2011-05-24 | 310d | 5d |  | 2800h | 2032h | 196,000 | 184,800 | 142,240 |
| 13 | 5.B.b.* | Disk Drivers |  | 110d | 2010-03-15 A | 2010-08-17 A | 10, 11 | 100% |  | 2010-03-08 | 2010-07-27 | 100d |  | Assembly/Test; Development | 1760h | 1760h | 123,200 | 112,000 | 123,200 |
| 14 | 5.B.b.* | Serial I/0 drivers |  | 130d | 2010-11-11 A | 2011-05-17 | 29 | 26% | 96d | 2010-11-18 | 2011-05-24 | 130d | 5d | Development | 1040h | 272h | 72,800 | 72,800 | 19,040 |
| 15 | 5.B.c | Memory Management |  | 98d | 2010-03-15 A | 2010-07-30 A | 10 | 100% |  | 2010-03-08 | 2010-07-13 | 90d |  | Development | 784h | 784h | 54,880 | 50,400 | 54,880 |
| 16 | 5.B.d | Opreating System Documentation |  | 25d | 2010-03-15 A | 2010-04-16 A | 10 | 100% |  | 2010-04-26 | 2010-05-28 | 25d |  | Design; Documentation | 400h | 400h | 32,000 | 32,000 | 32,000 |
| 17 | 5.B.e | Network interface |  | 90d | 2011-06-30 | 2011-11-04 | 31 |  |  | 2011-06-30 | 2011-11-04 | 90d | 15d | Development | 720h |  | 50,400 | 50,400 |  |
| 18 | 5.C | **Utilities** |  | 395d | 2010-03-08 A | 2011-09-23 |  | 77% | 91.86d | 2010-03-08 | 2011-09-23 | 395d | 105d |  | 2368h | 1888h | 199,120 | 182,000 | 165,520 |
| 19 | 5.C.a | Utilities Specification |  | 16d | 2010-03-08 A | 2010-03-29 A | 26, 27 | 100% |  | 2010-03-08 | 2010-03-26 | 15d |  | Design; Development | 256h | 256h | 21,760 | 20,400 | 21,760 |
| 20 | 5.C.f | Utilities Secified | milestone | 0d | 2010-03-29 | 2010-03-29 | 19 |  |  | 2010-03-26 | 2010-03-26 | 0d | 484d |  |  |  |  |  |  |
| 21 | 5.C.b | Routine Utilities |  | 65d | 2010-04-26 A | 2010-07-27 A | 19, 20 | 100% |  | 2010-03-29 | 2010-06-21 | 60d |  | Xdevelopment | 520h | 520h | 62,400 | 57,600 | 62,400 |
| 22 | 5.C.c | Complex Utitlities |  | 95d | 2010-03-30 A | 2010-08-11 A | 19 | 100% |  | 2010-03-29 | 2010-07-20 | 80d |  | Development | 760h | 760h | 53,200 | 44,800 | 53,200 |
| 23 | 5.C.d | Utilities Documentation |  | 22d | 2010-05-03 A | 2010-06-02 A | 19 | 100% |  | 2010-03-29 | 2010-04-23 | 20d |  | Design; Documentation | 352h | 352h | 28,160 | 25,600 | 28,160 |
| 24 | 5.C.e | Shell |  | 60d | 2011-06-30 | 2011-09-23 | 31 |  |  | 2011-06-30 | 2011-09-23 | 60d | 45d | Development | 480h |  | 33,600 | 33,600 |  |

| ID | WBS | Task | Type | Duration | Start | Finish | Predecessors | Complete | Remaining | Baseline start | Baseline finish | Baseline duration | Total slack | Constraint | Resources | Work | Actual work | Cost | Baseline cost | Actual cost |
| --- | --- | --- | --- | --- | --- | --- | --- | --- | --- | --- | --- | --- | --- | --- | --- | --- | --- | --- | --- | --- |
| 25 | 5.D | **System Integration** |  | 545d | 2010-01-04 A | 2012-02-23 |  | 37% | 342.21d | 2010-01-04 | 2012-02-02 | 530d | 0d |  |  | 3040h | 1080h | 214,800 | 209,200 | 81,600 |
| 26 | 5.D.a | Architectural Decisions |  | 25d | 2010-01-04 A | 2010-02-05 A |  | 100% |  | 2010-01-04 | 2010-02-05 | 25d |  |  | Design | 200h | 200h | 20,000 | 20,000 | 20,000 |
| 27 | 5.D.i | Decided on Architectures | milestone | 0d | 2010-02-05 | 2010-02-05 | 26 |  |  | 2010-02-05 | 2010-02-05 | 0d | 520d |  |  |  |  |  |  |  |
| 28 | 5.D.f | Start of Integration | milestone | 0d | 2010-09-09 | 2010-09-09 | 13, 15, 16, 21, 22, 23, 5 |  |  | 2010-09-09 | 2010-09-09 | 0d | 370d | start no earlier than 2010-09-09 |  |  |  |  |  |  |
| 29 | 5.D.b | Integration First phase |  | 55d | 2010-08-25 A | 2010-11-10 A | 13, 15, 16, 21, 22, 23, 5, 28 | 100% |  | 2010-09-09 | 2010-11-17 | 50d |  |  | Assembly/Test; Development | 880h | 880h | 61,600 | 56,000 | 61,600 |
| 30 | 5.D.g | Start of system testing | milestone | 0d | 2011-05-25 | 2011-05-25 | 6, 14 |  |  | 2011-05-25 | 2011-05-25 | 0d | 0d | start no earlier than 2011-05-25 |  |  |  |  |  |  |
| 31 | 5.D.c | system hard/software test |  | 25d | 2011-05-25 | 2011-06-29 | 6, 14, 30 |  |  | 2011-05-25 | 2011-06-29 | 25d | 0d |  | Assembly/Test | 200h |  | 14,000 | 14,000 |  |
| 32 | 5.D.d | Project documentation |  | 50d | 2011-06-30 | 2011-09-09 | 31 |  |  | 2011-06-30 | 2011-09-09 | 50d | 55d |  | Development; Documentation | 800h |  | 52,000 | 52,000 |  |
| 33 | 5.D.h | Start of acceptance testing | milestone | 0d | 2011-11-28 | 2011-11-28 | 17, 24, 32, 8 |  |  | 2011-11-07 | 2011-11-07 | 0d | 0d | start no earlier than 2011-11-07 |  |  |  |  |  |  |
| 34 | 5.D.e | Integration acceptance testing |  | 60d | 2011-11-29 | 2012-02-23 | 17, 24, 32, 8, 33 |  |  | 2011-11-07 | 2012-02-02 | 60d | 0d |  | Assembly/Test; Development | 960h |  | 67,200 | 67,200 |  |
| 35 | 1.5 | **Contingency reserves** |  | 0d | 2012-02-23 | 2012-02-23 |  |  |  | 2012-02-02 | 2012-02-02 | 0d | 0d |  |  |  |  | 157,104 | 157,104 |  |
| 36 | 1.5.1 | Budget reserves | milestone | 0d | 2012-02-23 | 2012-02-23 | 34FF |  |  | 2012-02-02 | 2012-02-02 | 0d | 0d |  | Budget Reserve |  |  | 49,440 | 49,440 |  |
| 37 | 1.5.2 | Management Reserves | milestone | 0d | 2012-02-23 | 2012-02-23 | 34FF |  |  | 2012-02-02 | 2012-02-02 | 0d | 0d |  | Management Reserve |  |  | 107,664 | 107,664 |  |
